# 东科 Vth -1V（IN0293）

Schedule from a web Gantt chart, 2025-09-29 to 2026-12-31.
Every day is a working day

## Schedule

| ID | WBS | Task | Duration | Start | Finish | Predecessors | Complete | Status | inPeople |
| --- | --- | --- | --- | --- | --- | --- | --- | --- | --- |
| 2 | 1 | kick-off | 1d | 2025-09-29 | 2025-09-29 |  | 100% | done |  |
| 3 | 2 | 项目立项会议 | 1d | 2025-11-20 | 2025-11-20 |  | 100% | done |  |
| 4 | 3 | **1st Learning Cycle** | 99d | 2025-11-21 | 2026-02-27 |  | 5% |  |  |
| 5 | 3.1 | Tape out | 3d | 2025-11-21 | 2025-11-23 |  | 100% | done |  |
| 6 | 3.2 | CP Probe Card | 40d | 2025-11-21 | 2025-12-30 |  | 16% |  | 董得福 |
| 7 | 3.3 | Wafer Process(Skip CP) | 30d | 2025-11-24 | 2025-12-23 |  |  |  |  |
| 9 | 3.4 | WLRE | 25d | 2025-12-24 | 2026-01-17 | 7 |  | waiting |  |
| 10 | 3.5 | Assembly | 26d | 2025-12-24 | 2026-01-18 | 7 |  | waiting | 谢书生 |
| 11 | 3.6 | **RE** | 40d | 2026-01-19 | 2026-02-27 |  |  | waiting | 刘子良/邓超凡 |
| 12 | 3.6.1 | RE 168H | 11d | 2026-01-19 | 2026-01-29 | 10 |  | waiting |  |
| 13 | 3.6.2 | RE 1000H | 40d | 2026-01-19 | 2026-02-27 | 10 |  | waiting |  |
| 14 | 4 | **2nd Learning Cycle** | 120d | 2026-01-30 | 2026-05-29 |  |  | waiting |  |
| 15 | 4.1 | Wafer & Assembly | 80d | 2026-01-30 | 2026-04-19 |  |  | waiting |  |
| 16 | 4.2 | RE 1000H | 40d | 2026-04-20 | 2026-05-29 | 15 |  | waiting | 刘子良/邓超凡 |
| 17 | 5 | **3rd Learning Cycle** | 93d | 2026-05-31 | 2026-08-31 |  |  | waiting |  |
| 18 | 5.1 | Wafer & Assembly | 50d | 2026-05-31 | 2026-07-19 |  |  | waiting |  |
| 19 | 5.2 | RE 1000H | 43d | 2026-07-20 | 2026-08-31 | 18 |  | waiting | 刘子良/邓超凡 |
| 20 | 6 | **Formal Qual.** | 123d | 2026-08-31 | 2026-12-31 |  |  | waiting |  |
| 21 | 6.1 | SPW W/S | 41d | 2026-08-31 | 2026-10-10 |  |  | waiting |  |
| 22 | 6.2 | F/O & Assemby out | 30d | 2026-10-11 | 2026-11-09 | 21 |  | waiting |  |
| 23 | 6.3 | RE 168H | 15d | 2026-11-10 | 2026-11-24 | 22 |  | waiting | 刘子良/邓超凡 |
| 24 | 6.4 | RE 1000H | 52d | 2026-11-10 | 2026-12-31 | 22 |  | waiting | 刘子良/邓超凡 |
